# caNanoLab 1.5.1 User Features

Schedule from MS Project, 2010-02-02 to 2010-05-13, A marks actual dates.
SAIC

## Calendars

- Standard: Mon-Fri 08:00-12:00, 13:00-17:00; Sat-Sun off.

## Resources

| Resource |
| --- |
| Sue |
| Sharon |
| Henry |
| Hendry |
| Henfry |
| NCI |
| Hendy |
| QA |
| Team |
| Thai |
| Systems |
| Juli |

## Schedule

| ID | WBS | Task | Duration | Start | Finish | Predecessors | Complete | Remaining | Total slack | Resources | Work | Actual work |
| --- | --- | --- | --- | --- | --- | --- | --- | --- | --- | --- | --- | --- |
| 1 | 1 | **caNanoLab 1.5.1 User Features** | 72.5d | 2010-02-02 A | 2010-05-13 |  | 88% | 8.84d | 0d |  | 1732h | 1574.4h |
| 2 | 1.1 | **Inception** | 11d | 2010-02-02 A | 2010-02-16 A |  | 100% |  |  |  | 256h | 256h |
| 3 | 1.1.1 | Project Management | 8d | 2010-02-02 A | 2010-02-11 A |  | 100% |  |  | Sharon | 64h | 64h |
| 4 | 1.1.2 | **Requirements** | 2d | 2010-02-02 A | 2010-02-03 A |  | 100% |  |  |  | 32h | 32h |
| 5 | 1.1.2.1 | Determine Scope | 2d | 2010-02-02 A | 2010-02-03 A |  | 100% |  |  | Sharon; NCI | 32h | 32h |
| 6 | 1.1.3 | **Analysis and Design** | 1d | 2010-02-04 A | 2010-02-04 A | 4 | 100% |  |  |  | 16h | 16h |
| 7 | 1.1.3.1 | Review/Analyze Features with Georgia Tech | 1d | 2010-02-04 A | 2010-02-04 A |  | 100% |  |  | Sue; Henry | 16h | 16h |
| 8 | 1.1.4 | **Implementation** | 5d | 2010-02-05 A | 2010-02-11 A | 6 | 100% |  |  |  | 64h | 64h |
| 9 | 1.1.4.1 | **Implement Defect Fixes** | 5d | 2010-02-05 A | 2010-02-11 A |  | 100% |  |  |  | 64h | 64h |
| 10 | 1.1.4.1.1 | Troubleshoot Erroneous Page Redirection | 1d | 2010-02-05 A | 2010-02-05 A |  | 100% |  |  | Sue | 8h | 8h |
| 11 | 1.1.4.1.2 | Modify Database Field Type for Amount | 1d | 2010-02-08 A | 2010-02-08 A | 10 | 100% |  |  | Sue | 8h | 8h |
| 12 | 1.1.4.1.3 | Error Message when Removing Characterization | 1d | 2010-02-09 A | 2010-02-09 A | 11 | 100% |  |  | Sue | 8h | 8h |
| 13 | 1.1.4.1.4 | Javascript Defect on Instruments/Techniques | 1d | 2010-02-05 A | 2010-02-05 A |  | 100% |  |  | Henry | 8h | 8h |
| 14 | 1.1.4.1.5 | Overwrite Excel File when Cloning | 2d | 2010-02-08 A | 2010-02-09 A | 13 | 100% |  |  | Henry | 16h | 16h |
| 15 | 1.1.4.1.6 | Browse Button Hidden after Reset | 1d | 2010-02-10 A | 2010-02-10 A | 14 | 100% |  |  | Henry | 8h | 8h |
| 16 | 1.1.4.1.7 | Defect in Modifying Organization POC | 1d | 2010-02-11 A | 2010-02-11 A | 15 | 100% |  |  | Henry | 8h | 8h |
| 17 | 1.1.5 | **Test** | 3d | 2010-02-12 A | 2010-02-16 A | 8 | 100% |  |  |  | 56h | 56h |
| 18 | 1.1.5.1 | Test Defect Fixes | 3d | 2010-02-12 A | 2010-02-16 A |  | 100% |  |  | Sue; Henry; QA | 56h | 56h |
| 19 | 1.1.6 | **Environment** | 3d | 2010-02-02 A | 2010-02-04 A |  | 100% |  |  |  | 24h | 24h |
| 20 | 1.1.6.1 | Configure 1.5.1 SVN Branch | 3d | 2010-02-02 A | 2010-02-04 A |  | 100% |  |  | Sue | 24h | 24h |
| 21 | 1.2 | **Elaboration** | 14d | 2010-02-17 A | 2010-03-08 A | 2 | 100% |  |  |  | 392h | 392h |
| 22 | 1.2.1 | Project Management | 2w | 2010-02-17 A | 2010-03-02 A |  | 100% |  |  | Sharon | 80h | 80h |
| 23 | 1.2.2 | Requirements | 2d | 2010-02-17 A | 2010-02-18 A |  | 100% |  |  | Sue; Sharon | 32h | 32h |
| 24 | 1.2.3 | **Anaysis and Design** | 2d | 2010-02-17 A | 2010-02-18 A |  | 100% |  |  |  | 16h | 16h |
| 25 | 1.2.3.1 | Design Usability Enhancements | 2d | 2010-02-17 A | 2010-02-18 A |  | 100% |  |  | Sue | 16h | 16h |

Notes:
- 10: On a few occasions, clicking a submit button would redirect to / "localhost:8080" instead of using the alias that we set up for our JBoss / server "cananolab.bme.gatech.edu". I don't know if this is related to / the code or to some error in our Apache config. It happened consistently / with the Composition Submit Button, the Add Chemical Association button, / and when we tried to add an image to a sample that had been cloned from / a previous sample. / Appears to be a defect in Apache configuration or code.
- 11: 25460
- 12: 26152
- 13: When adding a new Characterization Technique (e.g. spectrophotometry), / the off-focus event clears the drop-down where we just Todd Stokes, Georgia Tech added the new / value. When we accessed the drop-down a second time, our new value was / available. We selected it again, and a JavaScript Alert box was produced / saying only "Error". After clearing this alert box, the selection was / retained and there were no further problems with that particle. However, / this behavior was repeated for every particle. / This appears to be a bug.~ We will investigate this further.
- 14: After cloning a Finding for a fluorescence characterization, we were / unable to overwrite the file attachment with a new Excel file. I / investigated the storage directory and found that removing a finding / from a particle does not remove the source file. This is OK, but why / would that prevent us from storing a new file? Especially considering we / were changing the File Name (in the text box). We finally had to remove / the entire Finding record and then were able to attach the new file.
- 15: 25445
- 16: 26243

| ID | WBS | Task | Duration | Start | Finish | Predecessors | Complete | Resources | Work | Actual work |
| --- | --- | --- | --- | --- | --- | --- | --- | --- | --- | --- |
| 26 | 1.2.4 | **Implementation** | 10d | 2010-02-17 A | 2010-03-02 A |  | 100% |  | 168h | 168h |
| 27 | 1.2.4.1 | **Implement Usability Enhancements** | 10d | 2010-02-17 A | 2010-03-02 A |  | 100% |  | 168h | 168h |
| 28 | 1.2.4.1.1 | Default File Visibility Same as Sample | 2d | 2010-02-17 A | 2010-02-18 A |  | 100% | Sue | 16h | 16h |
| 29 | 1.2.4.1.2 | Support for Multiple Assays/Characterization | 3d | 2010-02-17 A | 2010-02-19 A |  | 100% | Sue | 24h | 24h |
| 30 | 1.2.4.1.3 | Support Sample Cloning | 1w | 2010-02-22 A | 2010-03-01 A | 29 | 100% | Sue | 40h | 40h |
| 31 | 1.2.4.1.4 | Enhance Publications Order | 1d | 2010-03-02 A | 2010-03-02 A | 30 | 100% | Sue | 8h | 8h |
| 32 | 1.2.4.1.5 | Enhanced Flow when Canceling Other | 2d | 2010-02-17 A | 2010-02-18 A |  | 100% | Henry | 16h | 16h |
| 33 | 1.2.4.1.6 | Deeper Edit Links | 2d | 2010-02-19 A | 2010-02-22 A | 32 | 100% | Henry | 16h | 16h |
| 34 | 1.2.4.1.7 | Enhance Column Ordering in Matrix | 4d | 2010-02-23 A | 2010-02-26 A | 33 | 100% | Henry; Sue | 48h | 48h |
| 35 | 1.2.5 | **Test** | 4d | 2010-03-03 A | 2010-03-08 A | 26 | 100% |  | 96h | 96h |
| 36 | 1.2.5.1 | Test Usability Enhancements | 4d | 2010-03-03 A | 2010-03-08 A |  | 100% | Sue; Henry; QA | 96h | 96h |
| 37 | 1.3 | **Construction** | 20.5d | 2010-03-03 A | 2010-03-31 A | 27 | 100% |  | 700h | 700h |
| 38 | 1.3.1 | Project Management | 1.5w | 2010-03-03 A | 2010-03-12 A |  | 100% | Sharon | 60h | 60h |
| 39 | 1.3.2 | Requirements | 2d | 2010-03-03 A | 2010-03-04 A |  | 100% | Sharon; Sue | 32h | 32h |
| 40 | 1.3.3 | **Anaysis and Design** | 4d | 2010-03-03 A | 2010-03-08 A |  | 100% |  | 64h | 64h |
| 41 | 1.3.3.1 | Design Usage Enhancements | 4d | 2010-03-03 A | 2010-03-08 A |  | 100% | Sue | 32h | 32h |
| 42 | 1.3.3.2 | Design Defect Fixes | 4d | 2010-03-03 A | 2010-03-08 A |  | 100% | Henry | 32h | 32h |
| 43 | 1.3.4 | **Implementation** | 13d | 2010-03-03 A | 2010-03-19 A |  | 100% |  | 244h | 244h |
| 44 | 1.3.4.1 | **Implement Usage Enhancements** | 7.5d | 2010-03-03 A | 2010-03-12 A |  | 100% |  | 84h | 84h |
| 45 | 1.3.4.1.1 | Implement Statistics | 1.5w | 2010-03-03 A | 2010-03-12 A |  | 100% | Sue | 60h | 60h |
| 46 | 1.3.4.1.2 | Implement Vistor Count | 3d | 2010-03-03 A | 2010-03-05 A |  | 100% | Henry | 24h | 24h |
| 47 | 1.3.4.2 | Implement Defect Fixes | 2w | 2010-03-08 A | 2010-03-19 A | 46 | 100% | Henry; Sue | 160h | 160h |
| 48 | 1.3.5 | **Test** | 12.5d | 2010-03-15 A | 2010-03-31 A | 43 | 100% |  | 300h | 300h |
| 49 | 1.3.5.1 | Test Usage and Defect Fixes | 2.5w | 2010-03-15 A | 2010-03-31 A |  | 100% | Sue; Henry; QA | 300h | 300h |

Notes:
- 28: When "Public" is selected for visibility while creating a sample, it / would be nice if "Public" visibility would be auto-selected for every / finding associated to that particle. It seems rare that you would add a / private finding to a public sample. (This shouldn't be true when / creating non-public particles, of course) / Our original thinking was that users could protect the files with an additional layer of visibility.~ In the next release, perhaps we could default file visibility to sample visibility so setting file visibility becomes optional.
- 29: When adding Assay Types, it feels clumsy to create a new / Characterization Property each time. If we do 3 different assays to / determine the size property, shouldn't they all be grouped under one / "Size" heading and all lead us to the same Conclusion statement? We / found that our conclusions were almost always exact copies of each other. / We will look into improving this.
- 30: !!Deep Cloning!! It took a long time for me (Todd) to figure out how / to effectively clone a particle into a new record. The process is / unintuitive and requires a series of clicks for each type of annotation / (composition, characterization, functionalization, etc.) before the / cloning is complete. A one-step clone of a sample would save us a great / deal of time and would certainly help us expand our data more quickly. / We have very many minor variations on the same basic quantum dot / structure, so this is critical for us.
- 32: There is some problem with storing newly created Assay Types. We / frequently selected [other] and typed a new entry. It saved / successfully, but on our next particle, the Assay Type dropdown would / still be empty. On one occasion, there were two [other] entries. This / may have been related to canceling the Add operation or clicking Add / without typing anything. / In release 1.5, assay types are attributes of characterizations so new assay types (entered from [other]) are stored to be associated with the selected characterization names only. The new entries will not be in the drop-down list of another type of characterization.~ For the two [other] entries, you are right it was caused by canceling the Add operation without typing anything.~ Users would see a warning message about this, but the value would still be [other].~ We will change the value to empty string if user cancel the add in the next release.
- 33: It would be nice to have deeper Edit links. To edit to a Finding / requires 3-4 clicks and a little extra waiting, when there's room on the / page to have an Edit button directly on the Finding. / Enter for one row only
- 34: #26194

| ID | WBS | Task | Type | Duration | Start | Finish | Predecessors | Complete | Remaining | Total slack | Free slack | Constraint | Resources | Work | Actual work |
| --- | --- | --- | --- | --- | --- | --- | --- | --- | --- | --- | --- | --- | --- | --- | --- |
| 50 | 1.4 | **Transition** |  | 31d | 2010-03-31 A | 2010-05-13 | 37 | 60% | 12.46d | 0d |  |  |  | 384h | 226.4h |
| 51 | 1.4.1 | Deploy to QA | milestone | 1d | 2010-03-31 A | 2010-04-01 A |  | 100% |  |  |  |  |  |  |  |
| 52 | 1.4.2 | Perform QA Testing |  | 2w | 2010-04-01 A | 2010-04-15 A | 51 | 100% |  |  |  |  | Team | 80h | 80h |
| 53 | 1.4.3 | Migrate Wash U Data |  | 4d | 2010-04-15 A | 2010-04-21 A | 52 | 100% |  |  |  |  | Sue | 32h | 32h |
| 54 | 1.4.4 | Migrate NCL Data |  | 4d | 2010-04-15 A | 2010-04-21 A | 52 | 100% |  |  |  |  | Sue | 32h | 32h |
| 55 | 1.4.5 | Migrate NCI Data |  | 3d | 2010-04-21 A | 2010-04-26 A | 54 | 100% |  |  |  |  | Sue | 24h | 24h |
| 56 | 1.4.6 | Implement User Registration |  | 3d | 2010-04-21 A | 2010-04-26 A | 54 | 100% |  |  |  |  | Thai | 24h | 24h |
| 57 | 1.4.7 | Configure User Accounts |  | 1d | 2010-04-26 A | 2010-04-27 | 56 | 90% | 0.1d | 0.9d | 0d |  | Sue | 8h | 7.2h |
| 58 | 1.4.8 | QA Test Data Merge and User Registration |  | 1w | 2010-04-27 A | 2010-05-04 | 57 | 50% | 0.5w | 7d |  |  | Team | 40h | 20h |
| 59 | 1.4.9 | Draft ARC and Send to Systems |  | 1d | 2010-04-27 A | 2010-04-28 | 57 | 90% | 0.1d | 0d |  |  | Sue | 8h | 7.2h |
| 60 | 1.4.10 | Request STAGE Deployment |  | 2d | 2010-04-28 | 2010-04-30 | 59 |  |  | 0d |  |  | Sue | 16h |  |
| 61 | 1.4.11 | Deploy to STAGE |  | 3d | 2010-04-30 | 2010-05-05 | 60 |  |  | 6d |  |  | Systems | 24h |  |
| 62 | 1.4.12 | Test/Resolve Defects on STAGE |  | 3d | 2010-04-30 | 2010-05-05 | 60 |  |  | 0d |  |  | Team | 24h |  |
| 63 | 1.4.13 | Request PROD Deployment |  | 3d | 2010-05-05 | 2010-05-10 | 62 |  |  | 0d |  |  | Sue | 24h |  |
| 64 | 1.4.14 | Deploy to PROD |  | 3d | 2010-05-10 | 2010-05-13 | 63 |  |  | 0d |  |  | Systems | 24h |  |
| 65 | 1.4.15 | Test/Resolve Defects on PROD |  | 3d | 2010-05-10 | 2010-05-13 | 63 |  |  | 0d |  |  | Team | 24h |  |
| 66 | 1.4.16 | Announce to the Community | milestone | 0d | 2010-05-13 | 2010-05-13 | 65 |  |  | 0d |  |  | Juli; Sharon |  |  |
| 67 | 1.4.17 | Previous Milestone: NCI CBIIT Deployment Deadline | milestone | 0d | 2010-04-05 | 2010-04-05 |  |  |  | 28.5d |  | start no earlier than 2010-04-05 |  |  |  |
