# caNanoLab 1.5.2 Plan

Schedule from MS Project, 2010-06-01 to 2010-09-30, A marks actual dates.
NCI

## Calendars

- Standard: Mon-Fri 08:00-12:00, 13:00-17:00; Sat-Sun off.

## Resources

| Resource |
| --- |
| Thai |
| Sharon |
| Juli |
| Sue |
| QA |
| NCI |
| Team |
| Tai |
| SIE |
| Systems |

## Schedule

| ID | WBS | Task | Type | Duration | Start | Finish | Predecessors | Complete | Remaining | Baseline start | Baseline finish | Baseline duration | Total slack | Constraint | Resources | Work | Actual work |
| --- | --- | --- | --- | --- | --- | --- | --- | --- | --- | --- | --- | --- | --- | --- | --- | --- | --- |
| 1 | 1 | **caNanoLab 1.5.2** |  | 87.12d | 2010-06-01 A | 2010-09-30 |  | 79% | 17.9d | 2010-06-01 | 2010-09-24 | 83.12d | 0d |  |  | 1676h | 1301.4h |
| 2 | 1.1 | **Inception** |  | 19d | 2010-06-01 A | 2010-06-25 A |  | 100% |  | 2010-06-01 | 2010-06-25 | 19d |  |  |  | 339h | 339h |
| 3 | 1.1.1 | **Project Mangement** |  | 8d | 2010-06-01 A | 2010-06-10 A |  | 100% |  | 2010-06-01 | 2010-06-10 | 8d |  |  |  | 64h | 64h |
| 4 | 1.1.1.1 | Determine Initial Scope |  | 1d | 2010-06-01 A | 2010-06-01 A |  | 100% |  | 2010-06-01 | 2010-06-01 | 1d |  |  | Sharon; Juli | 16h | 16h |
| 5 | 1.1.1.2 | Draft Initial Project Plan |  | 2d | 2010-06-02 A | 2010-06-03 A | 4 | 100% |  | 2010-06-02 | 2010-06-03 | 2d |  |  | Sharon | 16h | 16h |
| 6 | 1.1.1.3 | Review/Update Project Plan |  | 2d | 2010-06-04 A | 2010-06-07 A | 5 | 100% |  | 2010-06-04 | 2010-06-07 | 2d |  |  | Team | 16h | 16h |
| 7 | 1.1.1.4 | Deliverable: Baselined Project Plan | milestone | 1d | 2010-06-08 A | 2010-06-08 A | 6 | 100% |  | 2010-06-08 | 2010-06-08 | 1d |  |  | Sharon | 8h | 8h |
| 8 | 1.1.1.5 | **Report Project Status** |  | 1d | 2010-06-10 A | 2010-06-10 A |  | 100% |  | 2010-06-10 | 2010-06-10 | 1d |  |  |  | 8h | 8h |
| 9 | 1.1.1.5.1 | Draft Monthly Status Report | milestone | 1d | 2010-06-10 A | 2010-06-10 A |  | 100% |  | 2010-06-10 | 2010-06-10 | 1d |  | start no earlier than 2010-06-10 | Sharon | 8h | 8h |
| 10 | 1.1.2 | **Requirements** |  | 8d | 2010-06-04 A | 2010-06-15 A |  | 100% |  | 2010-06-04 | 2010-06-15 | 8d |  |  |  | 100h | 100h |
| 11 | 1.1.2.1 | Research Group Accounts on CBIIT Projects |  | 2d | 2010-06-04 A | 2010-06-07 A | 5 | 100% |  | 2010-06-04 | 2010-06-07 | 2d |  |  | Sharon | 16h | 16h |
| 12 | 1.1.2.2 | Draft Curation Account Matrix Requirements/Use Cases |  | 1w | 2010-06-08 A | 2010-06-14 A | 11, 5 | 100% |  | 2010-06-08 | 2010-06-14 | 1w |  |  | Sue [50%] | 20h | 20h |
| 13 | 1.1.2.3 | Draft Data Availability Matrix Requirements/Use Cases |  | 3d | 2010-06-04 A | 2010-06-08 A | 5 | 100% |  | 2010-06-04 | 2010-06-08 | 3d |  |  | Thai | 24h | 24h |
| 14 | 1.1.2.4 | Determine ISO/MinChar Standards |  | 2d | 2010-06-09 A | 2010-06-10 A | 13 | 100% |  | 2010-06-09 | 2010-06-10 | 2d |  |  | Sharon; Thai | 32h | 32h |
| 15 | 1.1.2.5 | Milestone: Review Requirements |  | 1d | 2010-06-15 A | 2010-06-15 A | 12 | 100% |  | 2010-06-15 | 2010-06-15 | 1d |  |  | Team | 8h | 8h |
| 16 | 1.1.3 | **Analysis and Design** |  | 3d | 2010-06-16 A | 2010-06-18 A |  | 100% |  | 2010-06-16 | 2010-06-18 | 3d |  |  |  | 48h | 48h |
| 17 | 1.1.3.1 | Design Data Availability Matrix |  | 3d | 2010-06-16 A | 2010-06-18 A | 15 | 100% |  | 2010-06-16 | 2010-06-18 | 3d |  |  | Thai; Sue | 48h | 48h |
| 18 | 1.1.4 | **Implementation** |  | 4d | 2010-06-21 A | 2010-06-24 A | 16 | 100% |  | 2010-06-21 | 2010-06-24 | 4d |  |  |  | 32h | 32h |
| 19 | 1.1.4.1 | Implement Data Availabilty Matrix Wireframes |  | 3d | 2010-06-21 A | 2010-06-23 A |  | 100% |  | 2010-06-21 | 2010-06-23 | 3d |  |  | Thai | 24h | 24h |
| 20 | 1.1.4.2 | Milestone: Review Wireframes |  | 1d | 2010-06-24 A | 2010-06-24 A | 19 | 100% |  | 2010-06-24 | 2010-06-24 | 1d |  |  | Team | 8h | 8h |
| 21 | 1.1.5 | **Testing** |  | 1d | 2010-06-25 A | 2010-06-25 A | 18 | 100% |  | 2010-06-25 | 2010-06-25 | 1d |  |  |  | 16h | 16h |
| 22 | 1.1.5.1 | Discuss Test Approach |  | 1d | 2010-06-25 A | 2010-06-25 A |  | 100% |  | 2010-06-25 | 2010-06-25 | 1d |  |  | Sharon; QA | 16h | 16h |
| 23 | 1.1.6 | **Environment** |  | 7.12d | 2010-06-04 A | 2010-06-15 A |  | 100% |  | 2010-06-04 | 2010-06-15 | 7.12d |  |  |  | 79h | 79h |
| 24 | 1.1.6.1 | Setup the Development Environment |  | 2d | 2010-06-04 A | 2010-06-07 A | 5 | 100% |  | 2010-06-04 | 2010-06-07 | 2d |  |  | Sue; Thai | 32h | 32h |
| 25 | 1.1.6.2 | Submit BDA Project Setup Request |  | 3d | 2010-06-04 A | 2010-06-08 A | 5 | 100% |  | 2010-06-04 | 2010-06-08 | 3d |  |  | Sue | 24h | 24h |
| 26 | 1.1.6.3 | Review new BDA Utilities |  | 4d | 2010-06-09 A | 2010-06-14 A | 25 | 100% |  | 2010-06-09 | 2010-06-14 | 4d |  |  | Sue [50%] | 16h | 16h |
| 27 | 1.1.6.4 | Draft/Submit BDA Development Checklist |  | 1h | 2010-06-09 A | 2010-06-09 A | 25 | 100% |  | 2010-06-09 | 2010-06-09 | 1h |  |  | Sue | 1h | 1h |
| 28 | 1.1.6.5 | Draft/Submit Gap Analysis |  | 8h | 2010-06-09 A | 2010-06-10 A | 27 | 100% |  | 2010-06-09 | 2010-06-10 | 8h |  |  | Sue [50%] | 4h | 4h |
| 29 | 1.1.6.6 | Draft/Submit Initial BDA Project Plan | milestone | 1h | 2010-06-15 A | 2010-06-15 A | 28, 26 | 100% |  | 2010-06-15 | 2010-06-15 | 1h |  |  | Sue; Sharon | 2h | 2h |
| 30 | 1.1.6.7 | Deliverable: BDA Project Plan | milestone | 0d | 2010-06-15 A | 2010-06-15 A | 29 | 100% |  | 2010-06-15 | 2010-06-15 | 0d |  |  | Sue; Sharon |  |  |

Notes:
- 29: https://wiki.nci.nih.gov/display/BuildandDeploymentAutomation/BDA+Project+Plan+Template

| ID | WBS | Task | Type | Duration | Start | Finish | Predecessors | Complete | Remaining | Baseline start | Baseline finish | Baseline duration | Total slack | Free slack | Constraint | Resources | Work | Actual work |
| --- | --- | --- | --- | --- | --- | --- | --- | --- | --- | --- | --- | --- | --- | --- | --- | --- | --- | --- |
| 31 | 1.2 | **Elaboration** |  | 28d | 2010-06-25 A | 2010-08-03 | 18 | 94% | 1.62d | 2010-06-25 | 2010-08-02 | 26.5d | 41.12d |  |  |  | 572h | 526.4h |
| 32 | 1.2.1 | **Project Management** |  | 1d | 2010-07-09 A | 2010-07-09 A |  | 100% |  | 2010-07-09 | 2010-07-09 | 1d |  |  |  |  | 8h | 8h |
| 33 | 1.2.1.1 | **Report Project Status** |  | 1d | 2010-07-09 A | 2010-07-09 A |  | 100% |  | 2010-07-09 | 2010-07-09 | 1d |  |  |  |  | 8h | 8h |
| 34 | 1.2.1.1.1 | Draft Monthly Status Report | milestone | 1d | 2010-07-09 A | 2010-07-09 A |  | 100% |  | 2010-07-09 | 2010-07-09 | 1d |  |  | start no earlier than 2010-07-09 | Sharon | 8h | 8h |
| 35 | 1.2.1.1.2 | Deliverable: Monthly Status Report | milestone | 0d | 2010-07-09 A | 2010-07-09 A | 34 | 100% |  | 2010-07-09 | 2010-07-09 | 0d |  |  |  | Sharon |  |  |
| 36 | 1.2.2 | **Iteration 1: Curation Account Mgmt** |  | 24d | 2010-06-25 A | 2010-07-28 |  | 92% | 2.03d | 2010-06-25 | 2010-07-28 | 24d | 45.12d |  |  |  | 296h | 269.6h |
| 37 | 1.2.2.1 | **Requirements** |  | 3d | 2010-06-25 A | 2010-06-29 A |  | 100% |  | 2010-06-25 | 2010-06-29 | 3d |  |  |  |  | 48h | 48h |
| 38 | 1.2.2.1.1 | Update Requirements/Use Cases |  | 3d | 2010-06-25 A | 2010-06-29 A |  | 100% |  | 2010-06-25 | 2010-06-29 | 3d |  |  |  | Sue; Sharon | 48h | 48h |
| 39 | 1.2.2.2 | **Analysis and Design** |  | 3d | 2010-06-25 A | 2010-06-29 |  | 10% | 2.7d | 2010-06-25 | 2010-06-29 | 3d | 55.02d | 0d |  |  | 24h | 2.4h |
| 40 | 1.2.2.2.1 | Update Design Specification |  | 3d | 2010-06-25 A | 2010-06-29 |  | 10% | 2.7d | 2010-06-25 | 2010-06-29 | 3d | 47.79d |  |  | Sue | 24h | 2.4h |
| 41 | 1.2.2.3 | **Implementation** |  | 11d | 2010-06-30 A | 2010-07-14 A | 39 | 100% |  | 2010-06-30 | 2010-07-14 | 11d |  |  |  |  | 80h | 80h |
| 42 | 1.2.2.3.1 | Implement Wireframes |  | 3d | 2010-06-30 A | 2010-07-02 A |  | 100% |  | 2010-06-30 | 2010-07-02 | 3d |  |  |  | Sue | 24h | 24h |
| 43 | 1.2.2.3.2 | Milestone: Review Wireframes |  | 1d | 2010-07-05 A | 2010-07-05 A | 42 | 100% |  | 2010-07-05 | 2010-07-05 | 1d |  |  |  | Team | 8h | 8h |
| 44 | 1.2.2.3.3 | Implement Curation Account Mgmt |  | 2w | 2010-06-30 A | 2010-07-13 A |  | 100% |  | 2010-06-30 | 2010-07-13 | 2w |  |  |  | Sue [50%] | 40h | 40h |
| 45 | 1.2.2.3.4 | Milestone: Demonstrate Data Availability Matrix | milestone | 1d | 2010-07-14 A | 2010-07-14 A | 44 | 100% |  | 2010-07-14 | 2010-07-14 | 1d |  |  |  | Sue | 8h | 8h |
| 46 | 1.2.2.4 | **Testing** |  | 21d | 2010-06-30 A | 2010-07-28 |  | 97% | 0.7d | 2010-06-30 | 2010-07-28 | 21d | 45.12d |  |  |  | 144h | 139.2h |
| 47 | 1.2.2.4.1 | Draft Test Plan/Cases |  | 3d | 2010-06-30 A | 2010-07-02 A | 37 | 100% |  | 2010-06-30 | 2010-07-02 | 3d |  |  |  | QA | 24h | 24h |
| 48 | 1.2.2.4.2 | Milestone: Deploy to QA |  | 2d | 2010-07-15 A | 2010-07-16 A | 41 | 100% |  | 2010-07-15 | 2010-07-16 | 2d |  |  |  | QA | 16h | 16h |
| 49 | 1.2.2.4.3 | Test on QA |  | 1w | 2010-07-19 A | 2010-07-23 A | 48 | 100% |  | 2010-07-19 | 2010-07-23 | 1w |  |  |  | QA | 40h | 40h |
| 50 | 1.2.2.4.4 | Resolve Defects |  | 1w | 2010-07-19 A | 2010-07-23 A | 48 | 100% |  | 2010-07-19 | 2010-07-23 | 1w |  |  |  | Thai | 40h | 40h |
| 51 | 1.2.2.4.5 | Re-Deploy/Test |  | 3d | 2010-07-26 A | 2010-07-28 | 49 | 80% | 0.6d | 2010-07-26 | 2010-07-28 | 3d | 45.12d |  |  | QA | 24h | 19.2h |
| 52 | 1.2.3 | **Iteration 2: Data Availability Matrix** |  | 20.5d | 2010-07-05 A | 2010-08-02 | 18 | 92% | 1.61d | 2010-07-05 | 2010-08-02 | 20.5d | 24.04d | 0d |  |  | 244h | 224.8h |
| 53 | 1.2.3.1 | **Requirements** |  | 2d | 2010-07-05 A | 2010-07-06 A |  | 100% |  | 2010-07-05 | 2010-07-06 | 2d |  |  |  |  | 16h | 16h |
| 54 | 1.2.3.1.1 | Update Requirements/Use Cases |  | 2d | 2010-07-05 A | 2010-07-06 A |  | 100% |  | 2010-07-05 | 2010-07-06 | 2d |  |  |  | Thai | 16h | 16h |

| ID | WBS | Task | Type | Duration | Start | Finish | Predecessors | Complete | Remaining | Baseline start | Baseline finish | Baseline duration | Total slack | Free slack | Constraint | Resources | Work | Actual work |
| --- | --- | --- | --- | --- | --- | --- | --- | --- | --- | --- | --- | --- | --- | --- | --- | --- | --- | --- |
| 55 | 1.2.3.2 | **Analysis and Design** |  | 2d | 2010-07-05 A | 2010-07-06 |  | 10% | 1.8d | 2010-07-05 | 2010-07-06 | 2d | 7.12d | 0d |  |  | 16h | 1.6h |
| 56 | 1.2.3.2.1 | Update Design Specification |  | 2d | 2010-07-05 A | 2010-07-06 |  | 10% | 1.8d | 2010-07-05 | 2010-07-06 | 2d | 1.25d |  |  | Thai | 16h | 1.6h |
| 57 | 1.2.3.3 | **Implementation** |  | 8.5d | 2010-07-07 A | 2010-07-19 A | 55 | 100% |  | 2010-07-07 | 2010-07-19 | 8.5d |  |  |  |  | 68h | 68h |
| 58 | 1.2.3.3.1 | Implement Data Availability Matrix |  | 1.5w | 2010-07-07 A | 2010-07-16 A |  | 100% |  | 2010-07-07 | 2010-07-16 | 1.5w |  |  |  | Thai | 60h | 60h |
| 59 | 1.2.3.3.2 | Milestone: Demonstrate Data Availability Matrix | milestone | 1d | 2010-07-16 A | 2010-07-19 A | 58 | 100% |  | 2010-07-16 | 2010-07-19 | 1d |  |  |  | Thai | 8h | 8h |
| 60 | 1.2.3.4 | **Testing** |  | 18.5d | 2010-07-07 A | 2010-08-02 |  | 97% | 0.62d | 2010-07-07 | 2010-08-02 | 18.5d | 24.04d |  |  |  | 144h | 139.2h |
| 61 | 1.2.3.4.1 | Draft Test Plan/Cases |  | 3d | 2010-07-07 A | 2010-07-09 A | 53 | 100% |  | 2010-07-07 | 2010-07-09 | 3d |  |  |  | QA | 24h | 24h |
| 62 | 1.2.3.4.2 | Milestone: Deploy to QA |  | 2d | 2010-07-19 A | 2010-07-21 A | 57 | 100% |  | 2010-07-19 | 2010-07-21 | 2d |  |  |  | QA | 16h | 16h |
| 63 | 1.2.3.4.3 | Test on QA |  | 1w | 2010-07-21 A | 2010-07-28 A | 62 | 100% |  | 2010-07-21 | 2010-07-28 | 1w |  |  |  | QA | 40h | 40h |
| 64 | 1.2.3.4.4 | Resolve Defects |  | 1w | 2010-07-21 A | 2010-07-28 A | 62 | 100% |  | 2010-07-21 | 2010-07-28 | 1w |  |  |  | Thai | 40h | 40h |
| 65 | 1.2.3.4.5 | Re-Deploy/Test |  | 3d | 2010-07-28 A | 2010-08-02 | 63 | 80% | 0.6d | 2010-07-28 | 2010-08-02 | 3d | 24.04d |  |  | QA | 24h | 19.2h |
| 66 | 1.2.4 | **Environment** |  | 28d | 2010-06-25 A | 2010-08-03 A |  | 100% |  | 2010-06-25 | 2010-08-02 | 26.38d |  |  |  |  | 24h | 24h |
| 67 | 1.2.4.1 | Implement BDA Lite |  | 5w | 2010-06-25 A | 2010-07-29 A |  | 100% |  |  |  |  |  |  |  |  |  |  |
| 68 | 1.2.4.2 | Provision the DEV server |  | 3d | 2010-07-30 A | 2010-08-03 A | 67 | 100% |  |  |  |  |  |  |  | Systems | 24h | 24h |
| 69 | 1.3 | **Construction** |  | 25d | 2010-08-02 A | 2010-09-06 | 52 | 96% | 0.96d | 2010-08-02 | 2010-08-30 | 20.5d | 0d |  |  |  | 376h | 344h |
| 70 | 1.3.1 | **Project Management** |  | 1d | 2010-08-10 A | 2010-08-10 A |  | 100% |  | 2010-08-10 | 2010-08-10 | 1d |  |  |  |  | 8h | 8h |
| 71 | 1.3.1.1 | **Report Project Status** |  | 1d | 2010-08-10 A | 2010-08-10 A |  | 100% |  | 2010-08-10 | 2010-08-10 | 1d |  |  |  |  | 8h | 8h |
| 72 | 1.3.1.1.1 | Draft Monthly Status Report |  | 1d | 2010-08-10 A | 2010-08-10 A |  | 100% |  | 2010-08-10 | 2010-08-10 | 1d |  |  | start no earlier than 2010-08-10 | Sharon | 8h | 8h |
| 73 | 1.3.1.1.2 | Deliverable: Monthly Status Report | milestone | 0d | 2010-08-10 A | 2010-08-10 A | 72 | 100% |  | 2010-08-10 | 2010-08-10 | 0d |  |  |  | Sharon |  |  |
| 74 | 1.3.2 | **Iteration 1: Defect Fixes/Enhancements** |  | 10d | 2010-08-02 A | 2010-08-16 A |  | 100% |  | 2010-08-02 | 2010-08-16 | 10d |  |  |  |  | 160h | 160h |
| 75 | 1.3.2.1 | Requirements |  | 1w | 2010-08-02 A | 2010-08-09 A |  | 100% |  | 2010-08-02 | 2010-08-09 | 1w |  |  |  | Thai | 40h | 40h |
| 76 | 1.3.2.2 | Analysis and Design |  | 1w | 2010-08-02 A | 2010-08-09 A |  | 100% |  | 2010-08-02 | 2010-08-09 | 1w |  |  |  | Thai | 40h | 40h |
| 77 | 1.3.2.3 | Implementation |  | 2w | 2010-08-02 A | 2010-08-16 A |  | 100% |  | 2010-08-02 | 2010-08-16 | 2w |  |  |  | Thai | 80h | 80h |
| 78 | 1.3.3 | **Environment** |  | 15d | 2010-08-04 A | 2010-08-24 A | 66 | 100% |  | 2010-08-02 | 2010-08-05 | 3.12d |  |  |  |  |  |  |
| 79 | 1.3.3.1 | Provision the QA server |  | 1w | 2010-08-04 A | 2010-08-10 A |  | 100% |  |  |  |  |  |  |  |  |  |  |
| 80 | 1.3.3.2 | Provision the STAGE server |  | 1w | 2010-08-11 A | 2010-08-17 A | 79 | 100% |  |  |  |  |  |  |  |  |  |  |
| 81 | 1.3.3.3 | Provision the PROD server |  | 1w | 2010-08-18 A | 2010-08-24 A | 80 | 100% |  |  |  |  |  |  |  |  |  |  |
| 82 | 1.3.4 | Milestone: Deploy to QA | milestone | 0d | 2010-08-16 | 2010-08-16 | 74 |  |  | 2010-08-16 | 2010-08-16 | 0d | 13d | 5d |  | Systems |  |  |
| 83 | 1.3.5 | Test on QA |  | 1w | 2010-08-16 A | 2010-08-23 A | 82 | 100% |  | 2010-08-16 | 2010-08-23 | 1w |  |  |  | QA | 40h | 40h |
| 84 | 1.3.6 | Sent Request for AppScan on QA |  | 1d | 2010-08-30 A | 2010-08-30 A | 83 | 100% |  | 2010-08-30 | 2010-08-30 | 1d |  |  |  | Sue | 8h | 8h |
| 85 | 1.3.7 | Re-Deploy/Resolve Defects |  | 2w | 2010-08-23 A | 2010-09-06 | 82, 83 | 80% | 0.4w | 2010-08-23 | 2010-08-30 | 1w | 0d |  |  | QA; Team | 160h | 128h |

| ID | WBS | Task | Type | Duration | Start | Finish | Predecessors | Complete | Remaining | Baseline start | Baseline finish | Baseline duration | Total slack | Free slack | Constraint | Resources | Work | Actual work |
| --- | --- | --- | --- | --- | --- | --- | --- | --- | --- | --- | --- | --- | --- | --- | --- | --- | --- | --- |
| 86 | 1.4 | **Transition** |  | 17.62d | 2010-09-06 A | 2010-09-30 | 69 | 14% | 15.13d | 2010-08-31 | 2010-09-24 | 18.12d | 0d |  |  |  | 389h | 92h |
| 87 | 1.4.1 | **Project Management** |  | 1d | 2010-09-10 A | 2010-09-10 A |  | 100% |  | 2010-09-10 | 2010-09-10 | 1d |  |  |  |  | 8h | 8h |
| 88 | 1.4.1.1 | **Report Project Status** |  | 1d | 2010-09-10 A | 2010-09-10 A |  | 100% |  | 2010-09-10 | 2010-09-10 | 1d |  |  |  |  | 8h | 8h |
| 89 | 1.4.1.1.1 | Draft Monthly Status Report |  | 1d | 2010-09-10 A | 2010-09-10 A |  | 100% |  | 2010-09-10 | 2010-09-10 | 1d |  |  | start no earlier than 2010-09-10 | Sharon | 8h | 8h |
| 90 | 1.4.1.1.2 | Deliverable: Monthly Status Report | milestone | 0d | 2010-09-10 A | 2010-09-10 A | 89 | 100% |  | 2010-09-10 | 2010-09-10 | 0d |  |  |  | Sharon |  |  |
| 91 | 1.4.2 | **Requirements** |  | 5d | 2010-09-06 A | 2010-09-13 |  | 95% | 0.25d | 2010-08-31 | 2010-09-06 | 5d | 12.62d |  |  |  | 80h | 76h |
| 92 | 1.4.2.1 | Finalize Use Case Specification |  | 1w | 2010-09-06 A | 2010-09-13 |  | 95% | 0.05w | 2010-08-31 | 2010-09-06 | 1w | 0d |  |  | Thai; Sharon | 80h | 76h |
| 93 | 1.4.2.2 | Deliverable: Use Case Specification | milestone | 0d | 2010-09-13 A | 2010-09-13 | 92 | 95% | 0d | 2010-09-06 | 2010-09-06 | 0d | 12.62d |  |  | Thai; Sharon |  |  |
| 94 | 1.4.3 | **Analysis and Design** |  | 10d | 2010-09-06 A | 2010-09-20 |  | 10% | 9d | 2010-08-31 | 2010-09-13 | 10d | 2.62d | 0d |  |  | 80h | 8h |
| 95 | 1.4.3.1 | Finalize Design Specification |  | 2w | 2010-09-06 A | 2010-09-20 |  | 10% | 1.8w | 2010-08-31 | 2010-09-13 | 2w | 0d |  |  | Sue | 80h | 8h |
| 96 | 1.4.3.2 | Deliverable: Design Specification | milestone | 0d | 2010-09-20 A | 2010-09-20 | 95 | 10% | 0d | 2010-09-13 | 2010-09-13 | 0d | 2.62d |  |  | Sue |  |  |
| 97 | 1.4.4 | **Implementation** |  | 5d | 2010-09-20 | 2010-09-27 | 94 |  |  | 2010-09-14 | 2010-09-20 | 5d | 2.62d |  |  |  | 64h |  |
| 98 | 1.4.4.1 | Finalize Installation Guide |  | 1w | 2010-09-20 | 2010-09-27 |  |  |  | 2010-09-14 | 2010-09-20 | 1w | 2.62d | 0d |  | Sue | 40h |  |
| 99 | 1.4.4.2 | Deliverable: Installation Guide | milestone | 0d | 2010-09-27 | 2010-09-27 | 98 |  |  | 2010-09-20 | 2010-09-20 | 0d | 2.62d |  |  | Sue |  |  |
| 100 | 1.4.4.3 | Package Software |  | 1w | 2010-09-20 | 2010-09-27 |  |  |  | 2010-09-14 | 2010-09-20 | 1w | 2.62d | 0d |  |  |  |  |
| 101 | 1.4.4.4 | Deliverable: Packaged Software | milestone | 0d | 2010-09-27 | 2010-09-27 | 100 |  |  | 2010-09-20 | 2010-09-20 | 0d | 2.62d |  |  | Sue |  |  |
| 102 | 1.4.4.5 | Update Wiki Content |  | 3d | 2010-09-20 | 2010-09-23 |  |  |  | 2010-09-14 | 2010-09-16 | 3d | 4.62d |  |  | Sharon | 24h |  |
| 103 | 1.4.5 | **Testing** |  | 17.62d | 2010-09-06 | 2010-09-30 |  |  |  | 2010-08-31 | 2010-09-24 | 18.12d | 0d |  |  |  | 157h |  |
| 104 | 1.4.5.1 | Request App Scan on STAGE |  | 4h | 2010-09-06 | 2010-09-06 |  |  |  | 2010-08-31 | 2010-08-31 | 4h | 0d |  |  | Sue | 4h |  |
| 105 | 1.4.5.2 | Milestone: Deploy to STAGE |  | 2d | 2010-09-07 | 2010-09-08 | 104 |  |  | 2010-09-01 | 2010-09-02 | 2d | 0d |  |  | Systems | 16h |  |
| 106 | 1.4.5.3 | Test on STAGE |  | 1w | 2010-09-09 | 2010-09-15 | 105 |  |  | 2010-09-03 | 2010-09-09 | 1w | 0d |  |  | QA | 40h |  |
| 107 | 1.4.5.4 | Send Request for AppScan |  | 1d | 2010-09-16 | 2010-09-16 | 106 |  |  | 2010-09-10 | 2010-09-10 | 1d | 9.12d |  |  | Sue | 8h |  |
| 108 | 1.4.5.5 | Re-Deploy/Resolve Defects |  | 1w | 2010-09-16 | 2010-09-22 | 106 |  |  | 2010-09-10 | 2010-09-16 | 1w | 0d |  |  | Team | 40h |  |
| 109 | 1.4.5.6 | Request Systems Team PROD Deployment Setup |  | 1h | 2010-09-23 | 2010-09-23 | 108 |  |  | 2010-09-17 | 2010-09-17 | 1h | 0d |  |  | Sue | 1h |  |
| 110 | 1.4.5.7 | Milestone: Deploy to PROD |  | 2d | 2010-09-23 | 2010-09-27 | 109 |  |  | 2010-09-17 | 2010-09-21 | 2d | 0d |  |  | Systems | 16h |  |
| 111 | 1.4.5.8 | Test on PROD |  | 2d | 2010-09-27 | 2010-09-29 | 110 |  |  | 2010-09-21 | 2010-09-23 | 2d | 0d |  |  | QA | 16h |  |
| 112 | 1.4.5.9 | Milestone: Announce Availability to the Community | milestone | 1d | 2010-09-29 | 2010-09-30 | 111 |  |  | 2010-09-23 | 2010-09-24 | 1d | 0d |  |  | Juli; Sharon | 16h |  |
| 113 | 2 | End caNanoLab 1.5.2 | milestone | 0d | 2010-09-30 | 2010-09-30 | 86 |  |  | 2010-09-24 | 2010-09-24 | 0d | 0d |  | start no earlier than 2010-08-02 |  |  |  |
